# 20180719项目进度计划

How a schedule from MS Project changed from version to version. A marks actual dates.

## Version 1 (saved 2018-07-19, file 20180719项目进度计划.mpp)

Note of the change: Merge pull request #1 from Hotel2333/master

| ID | WBS | Task | Duration | Start | Finish | Predecessors | Total float |
| --- | --- | --- | --- | --- | --- | --- | --- |
| 1 | 1 | **先启阶段** | 8d | 2018-07-19 | 2018-07-29 |  |  |
| 2 | 1.1 | **编制软件开发计划** | 2d | 2018-07-19 | 2018-07-20 |  |  |
| 3 |  | 编制《项目开发计划》 | 0.5d | 2018-07-19 | 2018-07-19 |  |  |
| 4 |  | 编制《项目进度计划》 | 0.5d | 2018-07-19 | 2018-07-19 |  |  |
| 5 |  | 编制《风险管理计划》 | 0.5d | 2018-07-20 | 2018-07-20 |  |  |
| 6 |  | 编制《配置管理计划》 | 1.5d | 2018-07-19 | 2018-07-20 |  |  |
| 7 |  | 编制《软件测试计划》 | 1.5d | 2018-07-19 | 2018-07-20 |  |  |
| 8 |  | 同行评审 | 0.5d | 2018-07-20 | 2018-07-20 | 3, 4, 7, 6, 5 |  |
| 9 | 1.2 | **需求设计** | 7d | 2018-07-19 | 2018-07-29 |  | 0d |
| 10 |  | 获取业务需求 | 0.2d | 2018-07-19 | 2018-07-19 |  |  |
| 11 |  | 定义业务需求，编制《软件需求规约》 | 0.8d | 2018-07-19 | 2018-07-19 | 10 |  |
| 12 |  | 同行评审 | 0.5d | 2018-07-20 | 2018-07-20 | 11 |  |
| 13 | 1.2.4 | **界面原型开发** | 4d | 2018-07-23 | 2018-07-26 |  | 0d |
| 14 |  | 设计原型图 | 3.5d | 2018-07-23 | 2018-07-26 |  |  |
| 15 |  | 形成交互原型文档 | 0.25d | 2018-07-26 | 2018-07-26 | 14 |  |
| 16 |  | 同行评审 | 0.25d | 2018-07-26 | 2018-07-26 | 15 |  |
| 17 | 1.2.5 | **需求开发** | 5.5d | 2018-07-20 | 2018-07-27 |  | 0d |
| 18 |  | 编制《前景文档》 | 0.5d | 2018-07-20 | 2018-07-20 |  |  |
| 19 |  | 编制《词汇表》 | 0.5d | 2018-07-20 | 2018-07-20 |  |  |
| 20 |  | 绘制用况图，编制《软件实现规约》 | 3d | 2018-07-23 | 2018-07-25 |  |  |
| 21 |  | 设计验收测试用例 | 3d | 2018-07-23 | 2018-07-25 |  |  |
| 22 |  | 阶段评审 | 0.5d | 2018-07-27 | 2018-07-27 | 20, 8, 12, 16 |  |
| 23 | 1.2.6 | **更新软件开发计划** | 1d | 2018-07-27 | 2018-07-29 |  | 0d |
| 24 |  | 更新《项目开发计划》 | 2d | 2018-07-27 | 2018-07-29 |  |  |
| 25 |  | 更新《项目进度计划》 | 2d | 2018-07-27 | 2018-07-29 |  |  |
| 26 |  | 更新《项目配置管理计划》 | 2d | 2018-07-27 | 2018-07-29 |  |  |
| 27 |  | 部署基线 | 1d | 2018-07-29 | 2018-07-29 | 24, 25, 26 |  |
| 28 | 2 | **精化阶段** | 6d | 2018-07-30 | 2018-08-05 | 1 |  |
| 29 | 2.1 | **详细设计** | 1d | 2018-07-19 | 2018-07-19 |  | 0d |
| 30 |  | 设计模型 | 1d? | 2018-07-19 | 2018-07-19 |  |  |
| 31 |  | 集成设计用例 | 1d? | 2018-07-19 | 2018-07-19 |  |  |
| 32 |  | 编制《详细设计说明书》 | 1d? | 2018-07-19 | 2018-07-19 |  |  |
| 33 | 2.2 | **数据库建模** | 1d | 2018-07-19 | 2018-07-19 |  | 0d |
| 34 |  | CDM | 1d? | 2018-07-19 | 2018-07-19 |  |  |
| 35 |  | PDM | 1d? | 2018-07-19 | 2018-07-19 |  |  |
| 36 |  | SQL脚本文件 | 1d? | 2018-07-19 | 2018-07-19 |  |  |
| 37 |  | 编制《数据库设计说明书》 | 1d? | 2018-07-19 | 2018-07-19 |  |  |
| 38 |  | 编制《系统构架设计说明书》 | 1d? | 2018-07-30 | 2018-07-30 |  |  |
| 39 |  | 同行评审 | 1d? | 2018-07-30 | 2018-07-30 |  |  |
| 40 | 3 | **构建阶段** | 11d | 2018-08-06 | 2018-08-19 | 28 |  |
| 41 |  | 前端编码 | 1d? | 2018-08-06 | 2018-08-06 |  |  |
| 42 |  | 后端编码 | 1d? | 2018-08-06 | 2018-08-06 |  |  |
| 43 |  | 单元测试 | 1d? | 2018-08-06 | 2018-08-06 |  |  |
| 44 |  | 集成测试 | 1d? | 2018-08-06 | 2018-08-06 |  |  |
| 45 | 4 | **产品化阶段** | 3d | 2018-08-20 | 2018-08-22 | 40 |  |
| 46 |  | 部署准备 | 1d? | 2018-08-20 | 2018-08-20 |  |  |
| 47 |  | 环境准备 | 1d? | 2018-08-20 | 2018-08-20 |  |  |
| 48 |  | 验收测试 | 1d? | 2018-08-20 | 2018-08-20 |  |  |
| 49 | 5 | **项目管理** | 26d | 2018-07-19 | 2018-08-23 |  |  |
| 50 |  | 项目进度控制 | 1d? | 2018-07-19 | 2018-07-19 |  |  |
| 51 |  | 风险控制 | 1d? | 2018-07-19 | 2018-07-19 |  |  |
| 52 | 6 | **配置管理** | 26d | 2018-07-19 | 2018-08-23 |  |  |
| 53 |  | 更新配置库 | 1d? | 2018-07-19 | 2018-07-19 |  |  |
| 54 |  | 状态审计 | 1d? | 2018-07-19 | 2018-07-19 |  |  |
| 55 |  | 更新基线状态 | 1d? | 2018-07-19 | 2018-07-19 |  |  |
| 56 | 7 | **每周例会** | 25d | 2018-07-21 | 2018-08-25 |  | 0d |
| 57 |  | 第一次每周例会 | 1d | 2018-07-21 | 2018-07-21 |  |  |
| 58 |  | 第二次每周例会 | 1d | 2018-07-28 | 2018-07-28 |  |  |
| 59 |  | 第三次每周例会 | 1d | 2018-08-04 | 2018-08-04 |  |  |
| 60 |  | 第四次每周例会 | 1d | 2018-08-11 | 2018-08-11 |  |  |
| 61 |  | 第五次每周例会 | 1d | 2018-08-18 | 2018-08-18 |  |  |
| 62 |  | 第六次每周例会 | 1d | 2018-08-25 | 2018-08-25 |  |  |

## Version 2 (saved 2018-07-20, file 20180720项目进度计划.mpp)

Note of the change: Merge pull request #2 from Hotel2333/master

Last finish stays 2018-08-25. Complete tasks 0 → 11.

Added:

| ID | Task | Duration | Start | Finish | Predecessors | Resources |
| --- | --- | --- | --- | --- | --- | --- |
| 2 | 获取项目需求 | 0.33d | 2018-07-18 A | 2018-07-18 A |  | ·吕浩泰 [33%] |
| 3 | 估计项目开发规模、成本、周期 | 0.33d | 2018-07-18 A | 2018-07-18 A | 2 | ·吕浩泰 [33%] |
| 4 | 项目立项 | 0.33d | 2018-07-18 A | 2018-07-18 A | 3 | ·吕浩泰 [33%] |
| 36 | **数据库设计** | 1d | 2018-07-19 | 2018-07-19 |  |  |
| 57 | 配置库更新 | 3d | 2018-07-19 | 2018-07-23 |  |  |
| 58 | **第一次项目交接** | 1d | 2018-07-28 | 2018-07-28 |  |  |
| 62 | **第二次项目交接** | 1d | 2018-08-04 | 2018-08-04 |  |  |
| 63 | 更新配置库 | 1d? | 2018-08-04 | 2018-08-04 |  |  |
| 64 | 状态审计 | 1d? | 2018-08-04 | 2018-08-04 |  |  |
| 65 | 更新基线状态 | 1d? | 2018-08-04 | 2018-08-04 |  |  |

Changed:

| ID | Task | Start | Finish | Duration | Complete | Predecessors | Other |
| --- | --- | --- | --- | --- | --- | --- | --- |
| 1 | **先启阶段** | 2018-07-19 → 2018-07-18 A (-1d) |  | 8d → 10d | 0% → 27% |  |  |
| 5 | **编制软件开发计划** | 2018-07-19 A |  |  | 0% → 86% | none → 4 |  |
| 6 | 编制《项目开发计划》 | 2018-07-19 A | 2018-07-19 A |  | 0% → 100% |  | resources ·吕浩泰 → ·吕浩泰 [50%] |
| 7 | 编制《项目进度计划》 | 2018-07-19 A | 2018-07-19 A |  | 0% → 100% | none → 6 | resources ·吕浩泰 → ·吕浩泰 [50%] |
| 8 | 编制《风险管理计划》 | 2018-07-20 A | 2018-07-20 A |  | 0% → 100% |  | resources ·吕浩泰 [50%] → ·吕浩泰 [25%] |
| 9 | 建立配置库，编制《配置管理计划》 | 2018-07-19 A | 2018-07-20 A |  | 0% → 100% |  | was named 编制《配置管理计划》 |
| 10 | 同行评审 |  |  |  |  |  | resources ·吕浩泰 [50%]; 陈凯平 [50%]; 陈树沛 [50%]; 吴梓铭 [50%]; 张丹萍 [50%] → ·吕浩泰 [25%]; 陈凯平 [50%]; 陈树沛 [50%]; 吴梓铭 [50%]; 张丹萍 [50%] |
| 11 | **需求分析** | 2018-07-19 A | 2018-07-29 → 2018-07-27 (-2d) | 7d → 6.5d | 0% → 21% |  | was named 需求设计 |
| 12 | 获取业务需求 | 2018-07-19 A | 2018-07-19 A |  | 0% → 100% |  | resources 张丹萍 → 张丹萍 [50%] |
| 13 | 定义业务需求，编制《软件需求规约》 | 2018-07-19 A | 2018-07-19 A |  | 0% → 100% |  | resources 张丹萍 → 张丹萍 [50%] |
| 14 | 编制《软件测试计划》 | 2018-07-19 A | 2018-07-20 A |  | 0% → 100% |  |  |
| 15 | 同行评审 | 2018-07-20 A | 2018-07-20 A |  | 0% → 100% |  | resources ·吕浩泰 [50%]; 陈凯平 [50%]; 陈树沛 [50%]; 吴梓铭 [50%]; 张丹萍 [50%] → ·吕浩泰 [25%]; 陈凯平 [50%]; 陈树沛 [50%]; 吴梓铭 [50%]; 张丹萍 [50%] |
| 21 | 编制《前景文档》 |  |  |  |  |  | resources ·吕浩泰 [50%] → ·吕浩泰 [25%] |
| 25 | 阶段评审 |  |  |  |  |  | resources ·吕浩泰; 陈凯平; 陈树沛; 吴梓铭; 张丹萍 → ·吕浩泰 [50%]; 陈凯平 [50%]; 陈树沛; 吴梓铭; 张丹萍 |
| 26 | **更新软件开发计划** |  | 2018-07-29 → 2018-07-28 (-1d) | 1d → 2d |  |  |  |
| 27 | 更新《项目开发计划》 |  | 2018-07-29 → 2018-07-28 (-1d) |  |  |  | resources ·吕浩泰 → ·吕浩泰 [25%] |
| 28 | 更新《项目进度计划》 |  | 2018-07-29 → 2018-07-28 (-1d) |  |  |  | resources ·吕浩泰 → ·吕浩泰 [50%] |
| 29 | 更新《项目配置管理计划》 |  | 2018-07-29 → 2018-07-28 (-1d) |  |  |  | resources 陈凯平 → 陈凯平 [50%] |
| 30 | 部署基线 | 2018-07-29 → 2018-07-28 (-1d) | 2018-07-29 → 2018-07-28 (-1d) |  |  |  | resources 陈凯平 → 陈凯平 [5%] |
| 31 | **精化阶段** |  |  | 6d → 7d |  |  |  |
| 53 | **项目管理** |  |  | 26d → 28d |  |  |  |
| 56 | **配置管理** |  |  | 26d → 28d |  |  |  |
| 59 | 更新配置库 | 2018-07-19 → 2018-07-28 (+9d) | 2018-07-19 → 2018-07-28 (+9d) |  |  |  |  |
| 60 | 状态审计 | 2018-07-19 → 2018-07-28 (+9d) | 2018-07-19 → 2018-07-28 (+9d) |  |  |  |  |
| 61 | 更新基线状态 | 2018-07-19 → 2018-07-28 (+9d) | 2018-07-19 → 2018-07-28 (+9d) |  |  |  |  |
| 66 | **每周例会** |  |  | 25d → 27d |  |  |  |
